# USP-SEEIPS (1)

Schedule from MS Project, 2019-05-01 to 2022-04-30, costs in €.

## Calendars

- Standard: Mon-Fri 08:00-12:00, 13:00-17:00; Sat-Sun off.

## Resources

| Resource | Group | Unit | Rate | Cost per use |
| --- | --- | --- | --- | --- |
| Dreamix - Administrator 1 | DREAMIX |  | 17 |  |
| Dreamix - Administrator 2 | DREAMIX |  | 17 |  |
| Dreamix - Istraživač 1 | DREAMIX |  | 21 |  |
| Dreamix - Istraživač 2 | DREAMIX |  | 21 |  |
| Dreamix - Istraživač 3 | DREAMIX |  | 21 |  |
| Dreamix - Istraživač 4 | DREAMIX |  | 21 |  |
| Dreamix - Menadžer 1 | DREAMIX |  | 25 |  |
| Dreamix - Menadžer 2 | DREAMIX |  | 25 |  |
| Dreamix - PhD Student 1 | DREAMIX |  | 18 |  |
| Dreamix - PhD Student 2 | DREAMIX |  | 18 |  |
| Dreamix - PhD Student 3 | DREAMIX |  | 18 |  |
| Dreamix - PostDoc 1 | DREAMIX |  | 23 |  |
| Dreamix - PostDoc 2 | DREAMIX |  | 23 |  |
| Dreamix - PostDoc 3 | DREAMIX |  | 23 |  |
| Dreamix - PostDoc 4 | DREAMIX |  | 23 |  |
| Dreamix - Tehničar 1 | DREAMIX |  | 20 |  |
| Dreamix - Tehničar 2 | DREAMIX |  | 20 |  |
| Dreamix - Tehničar 3 | DREAMIX |  | 20 |  |
| Dreamix - Tehničar 4 | DREAMIX |  | 20 |  |
| ETF - Administrator 1 | ETF |  | 15 |  |
| ETF - Istraživač 2 | ETF |  | 19 |  |
| ETF - Istraživač 3 | ETF |  | 19 |  |
| ETF - Menadžer 1 | ETF |  | 22 |  |
| ETF - Menadžer 2 | ETF |  | 22 |  |
| IREC - Administrator 2 | IREC |  | 25.5 |  |
| IREC - Istraživač 1 | IREC |  | 29 |  |
| IREC - Istraživač 2 | IREC |  | 29 |  |
| IREC - Istraživač 3 | IREC |  | 29 |  |
| IREC - PhD Student 1 | IREC |  | 26 |  |
| IREC - PhD Student 2 | IREC |  | 26 |  |
| ETF - Istraživač 1 | ETF |  | 19 |  |
| ETF - Administrator 2 | ETF |  | 15 |  |
| IREC - PostDoc 1 | IREC |  | 30 |  |
| IREC - PostDoc 2 | IREC |  | 30 |  |
| IREC - Tehničar 1 | IREC |  | 27.5 |  |
| IREC - Tehničar 2 | IREC |  | 27.5 |  |
| IREC - Tehničar 3 | IREC |  | 27.5 |  |
| IREC - Administrator 1 | IREC |  | 25.5 |  |
| PCE - Administrator 1 | PCE |  | 26 |  |
| PCE - Istraživač 1 | PCE |  | 29 |  |
| PCE - Istraživač 2 | PCE |  | 29 |  |
| PCE - Tehničar 1 | PCE |  | 27.5 |  |
| Solitek - Administrator 1 | SOLITEK |  | 21 |  |
| Solitek - Administrator 2 | SOLITEK |  | 21 |  |
| Solitek - Administrator 3 | SOLITEK |  | 21 |  |
| Solitek - Administrator 4 | SOLITEK |  | 21 |  |
| Solitek - Istraživač 1 | SOLITEK |  | 23 |  |
| Solitek - Istraživač 2 | SOLITEK |  | 23 |  |
| Solitek - PhD Student 1 | SOLITEK |  | 25 |  |
| Solitek - PostDoc 1 | SOLITEK |  | 26.5 |  |
| Solitek - PostDoc 2 | SOLITEK |  | 26.5 |  |
| Solitek - Tehničar 1 | SOLITEK |  | 22 |  |
| Solitek - Tehničar 2 | SOLITEK |  | 22 |  |
| Solitek - Tehničar 3 | SOLITEK |  | 22 |  |
| Solitek - Tehničar 5 | SOLITEK |  | 22 |  |
| Solitek - Tehničar 6 | SOLITEK |  | 22 |  |
| Solitek - Tehničar 7 | SOLITEK |  | 22 |  |
| Solitek - Tehničar 4 | SOLITEK |  | 22 |  |
| Vattenfall - Administrator 1 | VATTENFALL |  | 25 |  |
| Vattenfall - Administrator 2 | VATTENFALL |  | 25 |  |
| Vattenfall - Istraživač 1 | VATTENFALL |  | 37 |  |
| Vattenfall - Istraživač 2 | VATTENFALL |  | 37 |  |
| Vattenfall - Istraživač 3 | VATTENFALL |  | 37 |  |
| Vattenfall - Istraživač 4 | VATTENFALL |  | 37 |  |
| Vattenfall - Menadžer 1 | VATTENFALL |  | 41 |  |
| Vattenfall - Menadžer 2 | VATTENFALL |  | 41 |  |
| Vattenfall - PhD Student 1 | VATTENFALL |  | 38 |  |
| Vattenfall - PhD Student 2 | VATTENFALL |  | 38 |  |
| Vattenfall - Tehničar 1 | VATTENFALL |  | 29 |  |
| Vattenfall - Tehničar 2 | VATTENFALL |  | 29 |  |
| Vattenfall - Tehničar 3 | VATTENFALL |  | 29 |  |
| Vattenfall - Tehničar 4 | VATTENFALL |  | 29 |  |
| IREC - Koordinator 1 | IREC |  | 30 |  |
| IREC - Koordinator 2 | IREC |  | 30 |  |
| IREC - Koordinator 3 | IREC |  | 30 |  |
| IREC - Koordinator 4 | IREC |  | 30 |  |
| IREC - PostDoc 3 | IREC |  | 30 |  |
| IREC - PostDoc 4 |  |  | 30 |  |
| IREC - PhD Student 3 |  |  | 26 |  |
| Licenca za Project Manager |  | Licenca | 1980 |  |
| Licenca za Visual Studio Enterprise |  | Licenca | 2500 |  |
| Licenca za softver za testiranje |  | Licenca | 1500 |  |
| Reklamni materijal |  | RK | 20000 | 20000 |
| Licenca za PowerDesigner |  | Licenca | 12500 |  |
| Senzori za panele |  |  | 65000 |  |
| Solarni paneli |  |  | 150000 |  |
| Softver za integraciju hardvera i softvera |  |  | 30000 |  |
| Server |  |  |  |  |

## Schedule

| ID | WBS | Task | Duration | Start | Finish | Predecessors | Total slack | Free slack | Resources | Work | Cost |
| --- | --- | --- | --- | --- | --- | --- | --- | --- | --- | --- | --- |
| 1 | 1 | **WP1 - Analiza korisničkih zahteva i praćenje tržišta** | 89d | 2019-05-01 | 2019-08-31 |  |  |  |  | 3296h | 100,924 |
| 2 | 1.1 | **Analiza korisničkih zahteva** | 35d | 2019-05-01 | 2019-06-18 |  |  |  |  | 1800h | 53,392 |
| 3 | 1.1.1 | **Početak analize korisničkih zahteva** | 3d | 2019-05-01 | 2019-05-03 |  |  |  |  | 24h | 736 |
| 4 | 1.1.1.1 | Odabiranje ljudi koji će da rade analizu | 1d | 2019-05-01 | 2019-05-01 |  | 0d |  | IREC - Administrator 1 | 8h | 204 |
| 5 | 1.1.1.2 | Intervjuisanje ljudi | 1d | 2019-05-02 | 2019-05-02 | 4 | 0d |  | IREC - Administrator 2 | 8h | 204 |
| 6 | 1.1.1.3 | Podela ljudi u grupe | 1d | 2019-05-03 | 2019-05-03 | 5 | 0d |  | Vattenfall - Menadžer 1 | 8h | 328 |
| 7 | 1.1.2 | **Koncipiranje i plan praćenja korisničkih zahteva** | 3d | 2019-05-06 | 2019-05-08 | 3 | 0d |  |  | 64h | 2,076 |
| 8 | 1.1.2.1 | Kreiranje plana analize korisničkih zahteva | 1d | 2019-05-06 | 2019-05-06 |  | 2d |  | Vattenfall - Istraživač 1 | 8h | 296 |
| 9 | 1.1.2.2 | Podela aktivnosti po timovima | 1d | 2019-05-06 | 2019-05-06 |  | 1d | 0d | Vattenfall - Menadžer 2 | 8h | 328 |
| 10 | 1.1.2.3 | Odabiranje fabrika koje treba da analiziramo | 1d | 2019-05-07 | 2019-05-07 | 9 | 1d |  | IREC - Tehničar 1 | 8h | 220 |
| 11 | 1.1.2.4 | Ugovaranje termina za obilazak fabrika | 1d | 2019-05-07 | 2019-05-07 | 9 | 1d |  | Vattenfall - Menadžer 1 | 8h | 328 |
| 12 | 1.1.2.5 | Podela timova po fabrikama | 1d | 2019-05-06 | 2019-05-06 |  | 2d |  | IREC - Administrator 1 | 8h | 204 |
| 13 | 1.1.2.6 | Prikupljanje dozvola za promatranje postrojenja | 2d | 2019-05-06 | 2019-05-07 |  | 0d |  | IREC - PostDoc 1 | 16h | 480 |
| 14 | 1.1.2.7 | Pisanje izveštaja o planiranju analize | 1d | 2019-05-08 | 2019-05-08 | 13 | 0d |  | IREC - Tehničar 3 | 8h | 220 |
| 15 | 1.1.3 | **Realizacija analize korisničkih zahteva** | 10d | 2019-05-09 | 2019-05-22 | 7 | 0d |  |  | 152h | 5,408 |
| 16 | 1.1.3.1 | Uvid u trenutno stanje | 2d | 2019-05-09 | 2019-05-10 |  | 8d |  | IREC - PostDoc 2; Vattenfall - PhD Student 2 | 32h | 1,088 |
| 17 | 1.1.3.2 | **Obilazak fabrika** | 10d | 2019-05-09 | 2019-05-22 |  | 0d |  |  | 120h | 4,320 |
| 18 | 1.1.3.2.1 | **Obilazak fabrike** | 2d | 2019-05-09 | 2019-05-10 |  | 0d |  |  | 24h | 864 |
| 19 | 1.1.3.2.1.1 | Razgovor sa rukovodstvom fabrike | 1d | 2019-05-09 | 2019-05-09 |  | 0d |  | Vattenfall - Menadžer 2 | 8h | 328 |
| 20 | 1.1.3.2.1.2 | Obilazak fabričkog postrojenja | 1d | 2019-05-09 | 2019-05-09 |  | 0d |  | IREC - PhD Student 1 | 8h | 208 |
| 21 | 1.1.3.2.1.3 | Sastanak tima | 1d | 2019-05-10 | 2019-05-10 | 19, 20 | 0d |  | Vattenfall - Menadžer 1 | 8h | 328 |
| 22 | 1.1.3.2.2 | **Obilazak fabrike** | 2d | 2019-05-13 | 2019-05-14 | 18 | 0d |  |  | 24h | 864 |
| 23 | 1.1.3.2.2.1 | Razgovor sa rukovodstvom fabrike | 1d | 2019-05-13 | 2019-05-13 |  | 0d |  | Vattenfall - Menadžer 1 | 8h | 328 |
| 24 | 1.1.3.2.2.2 | Obilazak fabričkog postrojenja | 1d | 2019-05-13 | 2019-05-13 |  | 0d |  | IREC - PhD Student 2 | 8h | 208 |
| 25 | 1.1.3.2.2.3 | Sastanak tima | 1d | 2019-05-14 | 2019-05-14 | 23, 24 | 0d |  | Vattenfall - Menadžer 2 | 8h | 328 |

| ID | WBS | Task | Type | Duration | Start | Finish | Predecessors | Total slack | Free slack | Resources | Work | Cost |
| --- | --- | --- | --- | --- | --- | --- | --- | --- | --- | --- | --- | --- |
| 26 | 1.1.3.2.3 | **Obilazak fabrike** |  | 2d | 2019-05-15 | 2019-05-16 | 22 | 0d |  |  | 24h | 864 |
| 27 | 1.1.3.2.3.1 | Razgovor sa rukovodstvom fabrike |  | 1d | 2019-05-15 | 2019-05-15 |  | 0d |  | Vattenfall - Menadžer 2 | 8h | 328 |
| 28 | 1.1.3.2.3.2 | Obilazak fabričkog postrojenja |  | 1d | 2019-05-15 | 2019-05-15 |  | 0d |  | IREC - PhD Student 1 | 8h | 208 |
| 29 | 1.1.3.2.3.3 | Sastanak tima |  | 1d | 2019-05-16 | 2019-05-16 | 27, 28 | 0d |  | Vattenfall - Menadžer 1 | 8h | 328 |
| 30 | 1.1.3.2.4 | **Obilazak fabrike** |  | 2d | 2019-05-17 | 2019-05-20 | 26 | 0d |  |  | 24h | 864 |
| 31 | 1.1.3.2.4.1 | Razgovor sa rukovodstvom fabrike |  | 1d | 2019-05-17 | 2019-05-17 |  | 0d |  | Vattenfall - Menadžer 1 | 8h | 328 |
| 32 | 1.1.3.2.4.2 | Obilazak fabričkog postrojenja |  | 1d | 2019-05-17 | 2019-05-17 |  | 0d |  | IREC - PhD Student 2 | 8h | 208 |
| 33 | 1.1.3.2.4.3 | Sastanak tima |  | 1d | 2019-05-20 | 2019-05-20 | 31, 32 | 0d |  | Vattenfall - Menadžer 2 | 8h | 328 |
| 34 | 1.1.3.2.5 | **Obilazak fabrike** |  | 2d | 2019-05-21 | 2019-05-22 | 30 | 0d |  |  | 24h | 864 |
| 35 | 1.1.3.2.5.1 | Razgovor sa rukovodstvom fabrike |  | 1d | 2019-05-21 | 2019-05-21 |  | 0d |  | Vattenfall - Menadžer 2 | 8h | 328 |
| 36 | 1.1.3.2.5.2 | Obilazak fabričkog postrojenja |  | 1d | 2019-05-21 | 2019-05-21 |  | 0d |  | IREC - PhD Student 1 | 8h | 208 |
| 37 | 1.1.3.2.5.3 | Sastanak tima |  | 1d | 2019-05-22 | 2019-05-22 | 35, 36 | 0d |  | Vattenfall - Menadžer 1 | 8h | 328 |
| 38 | 1.1.4 | **Prikupljanje i analiza dobijenih informacija** |  | 15d | 2019-05-23 | 2019-06-12 | 15 |  |  |  | 1512h | 43,700 |
| 39 | 1.1.4.1 | Prikupljanje dobijenih informacija iz fabrika |  | 5d | 2019-05-23 | 2019-05-29 |  | 3d | 0d | IREC - Istraživač 2; IREC - Istraživač 3; IREC - PostDoc 1; IREC - PostDoc 2 | 160h | 4,720 |
| 40 | 1.1.4.2 | Analiziranje dobijenih informacija iz fabrika |  | 3d | 2019-05-30 | 2019-06-03 | 39 | 3d | 0d | IREC - Istraživač 1; Vattenfall - Istraživač 1; Vattenfall - PhD Student 1 | 72h | 2,496 |
| 41 | 1.1.4.3 | Analiziranje traženih zahteva |  | 3d | 2019-06-04 | 2019-06-06 | 40 | 3d | 0d | Vattenfall - Istraživač 4; Vattenfall - Menadžer 1; Vattenfall - PhD Student 1 | 72h | 2,784 |
| 42 | 1.1.4.4 | Kreiranje izveštaja |  | 1d | 2019-06-07 | 2019-06-07 | 41 | 3d |  | IREC - Tehničar 1 | 8h | 220 |
| 43 | 1.1.4.5 | Praćenje napretka |  | 15d | 2019-05-23 | 2019-06-12 |  | 0d |  | IREC - Administrator 1; IREC - Administrator 2; IREC - PhD Student 1; IREC - PhD Student 2; IREC - Tehničar 2; IREC - Tehničar 3; Vattenfall - Administrator 1; Vattenfall - Tehničar 2; Vattenfall - Tehničar 3; Vattenfall - PhD Student 2 | 1200h | 33,480 |
| 44 | 1.1.5 | **Kraj analize korisničkih zahteva** |  | 4d | 2019-06-13 | 2019-06-18 | 38 |  |  |  | 48h | 1,472 |
| 45 | 1.1.5.1 | Kreiranje završnog izveštaja |  | 2d | 2019-06-13 | 2019-06-14 |  | 0d |  | IREC - Istraživač 3; IREC - Tehničar 1 | 32h | 904 |
| 46 | 1.1.5.2 | Slanje izveštaja menadžeru projekta |  | 1d | 2019-06-17 | 2019-06-17 | 45 | 0d |  | IREC - PostDoc 2 | 8h | 240 |
| 47 | 1.1.5.3 | Dobijanje potvrde od menadžera |  | 1d | 2019-06-18 | 2019-06-18 | 46 | 0d |  | Vattenfall - Menadžer 2 | 8h | 328 |
| 48 | 1.2 | **Praćenje tržišta** |  | 88d | 2019-05-01 | 2019-08-30 |  |  |  |  | 1496h | 47,532 |
| 49 | 1.2.1 | **Početak praćenja tržišta** |  | 10d | 2019-05-01 | 2019-05-14 |  |  |  |  | 136h | 4,328 |
| 50 | 1.2.1.1 | Odabiranje ljudi koji će da prate tržište |  | 3d | 2019-05-01 | 2019-05-03 |  | 0d |  | Vattenfall - Menadžer 2; IREC - Istraživač 2 | 48h | 1,680 |
| 51 | 1.2.1.2 | Intervjuisanje ljudi |  | 4d | 2019-05-06 | 2019-05-09 | 50 | 0d |  | IREC - PhD Student 2; Vattenfall - PhD Student 1 | 64h | 2,048 |
| 52 | 1.2.1.3 | Podela ljudi u grupe | manual | 3d | 2019-05-10 | 2019-05-14 | 51 |  |  | Vattenfall - Administrator 1 | 24h | 600 |

Notes:
- 49: Pozdrav profesore, ne znamo da obrišemo ovo. / Boško i Nikola

| ID | WBS | Task | Type | Duration | Start | Finish | Predecessors | Total slack | Free slack | Constraint | Resources | Work | Cost |
| --- | --- | --- | --- | --- | --- | --- | --- | --- | --- | --- | --- | --- | --- |
| 53 | 1.2.2 | **Koncipiranje i plan praćenja tržišta** |  | 13d | 2019-05-14 | 2019-05-31 | 49 |  |  |  |  | 152h | 5,072 |
| 54 | 1.2.2.1 | Kreiranje plana praćenja tržišta | manual | 2d | 2019-05-15 | 2019-05-16 |  |  |  |  | IREC - Istraživač 1; Vattenfall - PhD Student 2 | 32h | 1,072 |
| 55 | 1.2.2.2 | Podela aktivnosti po timovima | manual | 2d | 2019-05-17 | 2019-05-20 | 54 |  |  |  | Vattenfall - PhD Student 1 | 16h | 608 |
| 56 | 1.2.2.3 | Odabiranje fabrika za pomatranje |  | 1d | 2019-05-21 | 2019-05-21 | 55 | 8d |  |  | Vattenfall - Istraživač 4 | 8h | 296 |
| 57 | 1.2.2.4 | Ugovaranje termina za obilazak fabrika |  | 1d | 2019-05-21 | 2019-05-21 | 55 | 0d |  |  | Vattenfall - Administrator 2 | 8h | 200 |
| 58 | 1.2.2.5 | Podela timova po fabrikama |  | 3d | 2019-05-22 | 2019-05-24 | 57 | 0d |  |  | Vattenfall - Menadžer 2; Vattenfall - PhD Student 1 | 48h | 1,896 |
| 59 | 1.2.2.6 | Prikupljanje dozvola za promatranje postrojenja |  | 2d | 2019-05-27 | 2019-05-28 | 58 | 0d |  |  | Vattenfall - Administrator 2 | 16h | 400 |
| 60 | 1.2.2.7 | Pisanje izveštaja o planiranju analize tržišta |  | 3d | 2019-05-29 | 2019-05-31 | 59 | 0d |  |  | Vattenfall - Administrator 2 | 24h | 600 |
| 61 | 1.2.3 | **Realizacija praćenja tržišta** |  | 35d | 2019-06-03 | 2019-07-19 | 53 |  |  |  |  | 200h | 7,000 |
| 62 | 1.2.3.1 | Uvid u trenutno stanje | manual | 10d | 2019-06-03 | 2019-06-14 |  |  |  |  |  |  |  |
| 63 | 1.2.3.2 | **Obilazak fabrika** |  | 25d | 2019-06-17 | 2019-07-19 | 62 |  |  |  |  | 200h | 7,000 |
| 64 | 1.2.3.2.1 | **Obilazak fabrike** |  | 5d | 2019-06-17 | 2019-06-21 |  |  |  |  |  | 40h | 1,400 |
| 65 | 1.2.3.2.1.1 | Razgovor sa rukovodstvom fabrike |  | 1.5d | 2019-06-17 | 2019-06-18 |  | 745d | 0d | start no earlier than 2019-06-17 | Vattenfall - Menadžer 1 | 12h | 492 |
| 66 | 1.2.3.2.1.2 | Obilazak fabričkog postrojenja |  | 2d | 2019-06-18 | 2019-06-20 | 65 | 745d | 0d | start no earlier than 2019-05-11 | IREC - PhD Student 2 | 16h | 416 |
| 67 | 1.2.3.2.1.3 | Sastanak tima |  | 1.5d | 2019-06-20 | 2019-06-21 | 66 | 745d |  | start no earlier than 2019-05-16 | Vattenfall - Menadžer 2 | 12h | 492 |
| 68 | 1.2.3.2.2 | **Obilazak fabrike** |  | 5d | 2019-06-24 | 2019-06-28 | 64 |  |  |  |  | 40h | 1,400 |
| 69 | 1.2.3.2.2.1 | Razgovor sa rukovodstvom fabrike |  | 1.5d | 2019-06-24 | 2019-06-25 |  | 0d |  |  | Vattenfall - Menadžer 2 | 12h | 492 |
| 70 | 1.2.3.2.2.2 | Obilazak fabričkog postrojenja |  | 2d | 2019-06-25 | 2019-06-27 | 69 | 0d |  |  | IREC - PhD Student 1 | 16h | 416 |
| 71 | 1.2.3.2.2.3 | Sastanak tima |  | 1.5d | 2019-06-27 | 2019-06-28 | 70 | 0d |  |  | Vattenfall - Menadžer 1 | 12h | 492 |
| 72 | 1.2.3.2.3 | **Obilazak fabrike** |  | 5d | 2019-07-01 | 2019-07-05 | 68 |  |  |  |  | 40h | 1,400 |
| 73 | 1.2.3.2.3.1 | Razgovor sa rukovodstvom fabrike |  | 1.5d | 2019-07-01 | 2019-07-02 |  | 0d |  |  | Vattenfall - Menadžer 1 | 12h | 492 |
| 74 | 1.2.3.2.3.2 | Obilazak fabričkog postrojenja |  | 2d | 2019-07-02 | 2019-07-04 | 73 | 0d |  |  | IREC - PhD Student 2 | 16h | 416 |
| 75 | 1.2.3.2.3.3 | Sastanak tima |  | 1.5d | 2019-07-04 | 2019-07-05 | 74 | 0d |  |  | Vattenfall - Menadžer 2 | 12h | 492 |
| 76 | 1.2.3.2.4 | **Obilazak fabrike** |  | 5d | 2019-07-08 | 2019-07-12 | 72 |  |  |  |  | 40h | 1,400 |
| 77 | 1.2.3.2.4.1 | Razgovor sa rukovodstvom fabrike |  | 1.5d | 2019-07-08 | 2019-07-09 |  | 0d |  |  | Vattenfall - Menadžer 2 | 12h | 492 |
| 78 | 1.2.3.2.4.2 | Obilazak fabričkog postrojenja |  | 2d | 2019-07-09 | 2019-07-11 | 77 | 0d |  |  | IREC - PhD Student 1 | 16h | 416 |
| 79 | 1.2.3.2.4.3 | Sastanak tima |  | 1.5d | 2019-07-11 | 2019-07-12 | 78 | 0d |  |  | Vattenfall - Menadžer 1 | 12h | 492 |

| ID | WBS | Task | Type | Duration | Start | Finish | Predecessors | Total slack | Resources | Work | Cost |
| --- | --- | --- | --- | --- | --- | --- | --- | --- | --- | --- | --- |
| 80 | 1.2.3.2.5 | **Obilazak fabrike** |  | 5d | 2019-07-15 | 2019-07-19 | 76 |  |  | 40h | 1,400 |
| 81 | 1.2.3.2.5.1 | Razgovor sa rukovodstvom fabrike |  | 1.5d | 2019-07-15 | 2019-07-16 |  | 0d | Vattenfall - Menadžer 1 | 12h | 492 |
| 82 | 1.2.3.2.5.2 | Obilazak fabričkog postrojenja |  | 2d | 2019-07-16 | 2019-07-18 | 81 | 0d | IREC - PhD Student 2 | 16h | 416 |
| 83 | 1.2.3.2.5.3 | Sastanak tima |  | 1.5d | 2019-07-18 | 2019-07-19 | 82 | 0d | Vattenfall - Menadžer 2 | 12h | 492 |
| 84 | 1.2.4 | **Prikupljanje i analiza dobijenih informacija** |  | 20d | 2019-07-22 | 2019-08-16 | 63 |  |  | 880h | 27,180 |
| 85 | 1.2.4.1 | Prikupljanje dobijenih informacija iz fabrika |  | 7d | 2019-07-22 | 2019-07-30 |  | 0d | IREC - Istraživač 1; IREC - PhD Student 1; IREC - PhD Student 2; IREC - PostDoc 1 | 224h | 6,216 |
| 86 | 1.2.4.2 | Analiziranje dobijenih informacija iz fabrika |  | 8d | 2019-07-31 | 2019-08-09 | 85 | 0d | IREC - Istraživač 2; IREC - PhD Student 2; IREC - PostDoc 2; IREC - PhD Student 1 | 256h | 7,104 |
| 87 | 1.2.4.3 | Kreiranje izveštaja |  | 5d | 2019-08-12 | 2019-08-16 | 86 | 0d | IREC - Administrator 2; Vattenfall - Administrator 2 | 80h | 2,020 |
| 88 | 1.2.4.4 | Praćenje napretka |  | 20d | 2019-07-22 | 2019-08-16 |  | 0d | Vattenfall - Istraživač 2; Vattenfall - Istraživač 3 | 320h | 11,840 |
| 89 | 1.2.5 | **Kraj praćenja tržišta** |  | 10d | 2019-08-16 | 2019-08-30 | 84 |  |  | 128h | 3,952 |
| 90 | 1.2.5.1 | Kreiranje završnog izveštaja | manual | 6d | 2019-08-19 | 2019-08-26 |  |  | IREC - PostDoc 2; Vattenfall - Tehničar 2 | 96h | 2,832 |
| 91 | 1.2.5.2 | Slanje izveštaja menadžeru projekta | manual | 3d | 2019-08-27 | 2019-08-29 | 90 |  | Vattenfall - Istraživač 4 | 24h | 888 |
| 92 | 1.2.5.3 | Dobijanje potvrde od menadžera | manual | 1d | 2019-08-30 | 2019-08-30 | 91 |  | Vattenfall - Tehničar 3 | 8h | 232 |
| 93 | 2 | Prektretnica M1 - Kraj analize tržišta | milestone, manual | 0d | 2019-09-02 | 2019-09-02 | 1 |  |  |  |  |
| 94 | 3 | **WP2 - Planiranje projekta** |  | 88d | 2019-09-01 | 2019-12-31 | 1 |  | Licenca za Project Manager [1 Licenca] | 1584h | 36,436 |
| 95 | 3.1 | Definisanje obima projekta |  | 25d | 2019-09-02 | 2019-10-04 |  | 0d | Dreamix - Tehničar 1; ETF - Istraživač 1; Solitek - PostDoc 1 | 600h | 13,100 |
| 96 | 3.2 | Procena budžeta |  | 12d | 2019-10-07 | 2019-10-22 | 95 | 0d | Dreamix - PostDoc 4; Solitek - Istraživač 1 | 192h | 4,416 |
| 97 | 3.3 | Planiranje rizika |  | 10d | 2019-10-23 | 2019-11-05 | 96 | 0d | Dreamix - PostDoc 3; ETF - Istraživač 3 | 160h | 3,360 |
| 98 | 3.4 | Planiranje organizacije projekta |  | 11d | 2019-11-06 | 2019-11-20 | 97 | 0d | Solitek - Istraživač 1; Solitek - Tehničar 1 | 176h | 3,960 |
| 99 | 3.5 | Pronalazenje ljudi za projekat |  | 10d | 2019-11-21 | 2019-12-04 | 98 | 0d | Dreamix - Menadžer 1 | 80h | 2,000 |
| 100 | 3.6 | Organizacija nacina komunikacije |  | 10d | 2019-12-05 | 2019-12-18 | 99 | 0d | Dreamix - Administrator 1; Solitek - Tehničar 7 | 160h | 3,120 |
| 101 | 3.7 | Određivanje mera kvaliteta i postupaka |  | 9d | 2019-12-19 | 2019-12-31 | 100 | 0d | Dreamix - PhD Student 1; Dreamix - PhD Student 2; Solitek - PostDoc 2 | 216h | 4,500 |
| 102 | 4 | Prekretnica M2 - Isplaniran projekat | milestone, manual | 0d | 2020-01-01 | 2020-01-01 | 94 |  |  |  |  |
| 103 | 5 | **WP3 - Modelovanje i dizajn** |  | 109d | 2020-01-01 | 2020-05-31 | 94 |  |  | 3344h | 81,112 |
| 104 | 5.1 | **Dizajniranje i modelovanje solarnog panela** |  | 108d | 2020-01-01 | 2020-05-29 |  |  |  | 2592h | 66,024 |
| 105 | 5.1.1 | Dizajniranje solarnog panela sa pratećim meračima i kolektorom struje |  | 78d | 2020-01-01 | 2020-04-17 |  | 0d | PCE - Tehničar 1; Solitek - PostDoc 1; Solitek - Tehničar 1 | 1872h | 47,424 |
| 106 | 5.1.2 | Modelovanje arhitekture PLCa za kontrolu solarnih panela |  | 30d | 2020-04-20 | 2020-05-29 | 105 | 0d | PCE - Istraživač 2; Solitek - PostDoc 2; Solitek - Tehničar 5 | 720h | 18,600 |

| ID | WBS | Task | Type | Duration | Start | Finish | Predecessors | Total slack | Resources | Work | Cost |
| --- | --- | --- | --- | --- | --- | --- | --- | --- | --- | --- | --- |
| 107 | 5.2 | **Dizajniranje i modelovanje veb aplikacije** |  | 47d | 2020-01-01 | 2020-03-05 |  |  |  | 752h | 15,088 |
| 108 | 5.2.1 | Kreiranje dijagrama klasa |  | 15d | 2020-01-01 | 2020-01-21 |  | 0d | Dreamix - PhD Student 1; Dreamix - PhD Student 2 | 240h | 4,320 |
| 109 | 5.2.2 | Kreiranje dijagrama slucaja upotrebe |  | 15d | 2020-01-22 | 2020-02-11 | 108 | 0d | Dreamix - PhD Student 3; Dreamix - PostDoc 3 | 240h | 4,920 |
| 110 | 5.2.3 | Kreiranje dijagrama sekvenci |  | 17d | 2020-02-12 | 2020-03-05 | 109 | 0d | Dreamix - PostDoc 2; Dreamix - Tehničar 1 | 272h | 5,848 |
| 111 | 6 | Prekretnica M3 - Sistem modelovan | milestone | 0d | 2019-05-01 | 2019-05-01 |  | 783d |  |  |  |
| 112 | 7 | **WP4 - Izrada prototipa** |  | 45d | 2020-06-01 | 2020-07-31 | 103 |  | Licenca za PowerDesigner [1 Licenca] | 2088h | 276,408 |
| 113 | 7.1 | **Prototip solarnog panela** |  | 44d | 2020-06-01 | 2020-07-30 |  |  | Senzori za panele; Solarni paneli | 1288h | 248,068 |
| 114 | 7.1.1 | Izrada prototipa solarnog panela | manual | 23d | 2020-06-01 | 2020-07-01 |  |  | PCE - Istraživač 1; PCE - Istraživač 2; Solitek - PostDoc 2; Solitek - Tehničar 4 | 736h | 19,596 |
| 115 | 7.1.2 | Integracija panela sa meračima | manual | 7d | 2020-07-02 | 2020-07-10 | 114 |  | PCE - Istraživač 1; Solitek - Istraživač 2; Solitek - PhD Student 1; Solitek - Tehničar 2; Solitek - Tehničar 3 | 280h | 6,776 |
| 116 | 7.1.3 | Integracija panela sa kolektorom struje | manual | 8d | 2020-07-13 | 2020-07-22 | 115 |  | PCE - Tehničar 1; Solitek - Tehničar 3 | 128h | 3,168 |
| 117 | 7.1.4 | Validacija prototipa panela | manual | 6d | 2020-07-23 | 2020-07-30 | 116 |  | PCE - Tehničar 1; Solitek - Administrator 4; Solitek - PhD Student 1 | 144h | 3,528 |
| 118 | 7.2 | **Prototip veb aplikacije** |  | 25d | 2020-06-01 | 2020-07-03 |  |  |  | 800h | 15,840 |
| 119 | 7.2.1 | Izrada prototipa veb aplikacije | manual | 20d | 2020-06-01 | 2020-06-26 |  |  | Dreamix - Istraživač 4; Dreamix - PhD Student 1; ETF - Istraživač 2; ETF - Menadžer 1 | 640h | 12,800 |
| 120 | 7.2.2 | Validacija prototipa veb aplikacije | manual | 5d | 2020-06-29 | 2020-07-03 | 119 |  | Dreamix - PhD Student 1; Dreamix - Tehničar 2; ETF - Istraživač 2; ETF - Istraživač 3 | 160h | 3,040 |
| 121 | 8 | Prekretnica M4 - Prototip | milestone | 0d | 2020-07-31 | 2020-07-31 | 112 | 455d |  |  |  |
| 122 | 9 | **WP5 - Implementacija** |  | 151d | 2020-08-03 | 2021-02-28 | 112 |  | Licenca za Visual Studio Enterprise [1 Licenca] | 7520h | 407,740 |
| 123 | 9.1 | **Implementacija solarnog panela** |  | 140d | 2020-08-03 | 2021-02-12 |  |  | Solarni paneli | 5280h | 356,920 |
| 124 | 9.1.1 | Postavljanje solarnog panela | manual | 20d | 2020-08-03 | 2020-08-28 |  |  | Solitek - Tehničar 3; Solitek - Tehničar 5; Solitek - Tehničar 6; Vattenfall - Tehničar 2; Vattenfall - Tehničar 3 | 800h | 19,840 |
| 125 | 9.1.2 | **Konfigurisanje solarnog panela** |  | 120d | 2020-08-31 | 2021-02-12 | 124 |  | Senzori za panele | 4480h | 187,080 |
| 126 | 9.1.2.1 | Dodavanje svih senzora |  | 80d | 2020-08-31 | 2020-12-18 |  | 0d | PCE - Istraživač 2; PCE - Tehničar 1; Solitek - Tehničar 4; Vattenfall - Tehničar 1 | 2560h | 68,800 |
| 127 | 9.1.2.2 | Dodavanje kolektora struje |  | 40d | 2020-12-21 | 2021-02-12 | 126 | 0d | PCE - Istraživač 1; PCE - Tehničar 1; Solitek - Tehničar 6; Solitek - Tehničar 7; Vattenfall - Istraživač 3; Vattenfall - Tehničar 2 | 1920h | 53,280 |
| 128 | 9.2 | **Implementacija veb aplikacije** |  | 60d | 2020-08-03 | 2020-10-23 |  |  |  | 2240h | 48,320 |
| 129 | 9.2.1 | Implementacija frontenda |  | 20d | 2020-08-03 | 2020-08-28 |  | 0d | Dreamix - Istraživač 2; Dreamix - Menadžer 2; Dreamix - PostDoc 1; Dreamix - PostDoc 3; Dreamix - Tehničar 2 | 800h | 17,920 |
| 130 | 9.2.2 | Implementacija backenda |  | 20d | 2020-08-31 | 2020-09-25 | 129 | 0d | Dreamix - Istraživač 3; Dreamix - PhD Student 1; Dreamix - PhD Student 2; Dreamix - PostDoc 1; Dreamix - PostDoc 3 | 800h | 16,480 |
| 131 | 9.2.3 | Implementacija baze |  | 20d | 2020-09-28 | 2020-10-23 | 130 | 0d | Dreamix - Istraživač 3; Dreamix - PostDoc 2; Dreamix - PostDoc 3; Dreamix - Tehničar 2 | 640h | 13,920 |
| 132 | 10 | Prekretnica M5 - Implementiran sistem | milestone | 0d | 2021-02-28 | 2021-02-28 | 122 | 305d |  |  |  |

| ID | WBS | Task | Type | Duration | Start | Finish | Predecessors | Total slack | Free slack | Resources | Work | Cost |
| --- | --- | --- | --- | --- | --- | --- | --- | --- | --- | --- | --- | --- |
| 133 | 11 | **WP6 - Testiranje sistema** |  | 66d | 2021-03-01 | 2021-05-31 | 122 |  |  |  | 2600h | 59,160 |
| 134 | 11.1 | **Testiranje solarnog panela** |  | 60d | 2021-03-01 | 2021-05-21 |  |  |  |  | 1760h | 40,720 |
| 135 | 11.1.1 | Provera ispravnosti solarnog panela |  | 40d | 2021-03-01 | 2021-04-23 |  | 0d |  | ETF - Istraživač 2; ETF - Istraživač 3; PCE - Istraživač 2; PCE - Tehničar 1 | 1280h | 30,240 |
| 136 | 11.1.2 | Validacija testiranja |  | 20d | 2021-04-26 | 2021-05-21 | 135 | 0d |  | ETF - Istraživač 2; ETF - Istraživač 3; PCE - Tehničar 1 | 480h | 10,480 |
| 137 | 11.2 | **Testiranje veb aplikacije** |  | 45d | 2021-03-01 | 2021-04-30 |  |  |  |  | 840h | 18,440 |
| 138 | 11.2.1 | Jedinično testiranje |  | 25d | 2021-03-01 | 2021-04-02 |  | 0d |  | ETF - Istraživač 1; ETF - Administrator 1; PCE - Istraživač 1 | 600h | 12,600 |
| 139 | 11.2.2 | Izvršavanje testova |  | 10d | 2021-04-05 | 2021-04-16 | 138 | 0d |  | ETF - Menadžer 2; PCE - Istraživač 1 | 160h | 4,080 |
| 140 | 11.2.3 | Validacija testiranja |  | 10d | 2021-04-19 | 2021-04-30 | 139 | 0d |  | ETF - Menadžer 2 | 80h | 1,760 |
| 141 | 12 | Prekretnica M6 - Testiran sistem | milestone | 0d | 2021-05-31 | 2021-05-31 | 133 | 239d |  |  |  |  |
| 142 | 13 | **WP7 - Integracija solarnih panela sa aplikacijom** |  | 66d | 2021-06-01 | 2021-08-31 | 133 |  |  | Softver za integraciju hardvera i softvera | 1504h | 62,424 |
| 143 | 13.1 | Pisanje plana integracije |  | 10d | 2021-06-01 | 2021-06-14 |  | 50d | 0d | Dreamix - Administrator 2; Dreamix - PhD Student 2; Solitek - Administrator 3; Solitek - PostDoc 1 | 320h | 6,600 |
| 144 | 13.2 | Kreiranje glavnog kontrolnog modula |  | 6d | 2021-06-15 | 2021-06-22 | 143 | 50d |  | Dreamix - PostDoc 2; Dreamix - Tehničar 1; Dreamix - Tehničar 2 | 144h | 3,024 |
| 145 | 13.3 | **Integracija od vrha ka dnu** |  | 50d | 2021-06-23 | 2021-08-31 |  |  |  | Server [0.1%] | 1040h | 22,800 |
| 146 | 13.3.1 | **Integracija 1** |  | 10d | 2021-06-23 | 2021-07-06 |  |  |  |  | 208h | 4,560 |
| 147 | 13.3.1.1 | Zamena stub-ova stvarnim komponenatama | manual | 6d | 2021-06-23 | 2021-06-30 |  |  |  | Dreamix - PostDoc 2; Dreamix - Tehničar 2; Solitek - Tehničar 2 | 144h | 3,120 |
| 148 | 13.3.1.2 | Integrisanje stvarne komponente | manual | 4d | 2021-07-01 | 2021-07-06 | 147 |  |  | Dreamix - PostDoc 3; Solitek - Tehničar 3 | 64h | 1,440 |
| 149 | 13.3.2 | **Integracija 2** |  | 10d | 2021-07-06 | 2021-07-20 | 146 |  |  |  | 208h | 4,560 |
| 150 | 13.3.2.1 | Zamena stub-ova stvarnim komponenatama | manual | 6d | 2021-07-07 | 2021-07-14 |  |  |  | Dreamix - PostDoc 1; Dreamix - Tehničar 1; Solitek - Tehničar 1 | 144h | 3,120 |
| 151 | 13.3.2.2 | Integrisanje stvarne komponente | manual | 4d | 2021-07-15 | 2021-07-20 | 150 |  |  | Dreamix - PostDoc 4; Solitek - Tehničar 4 | 64h | 1,440 |
| 152 | 13.3.3 | **Integracija 3** |  | 10d | 2021-07-20 | 2021-08-03 | 149 |  |  |  | 208h | 4,560 |
| 153 | 13.3.3.1 | Zamena stub-ova stvarnim komponenatama | manual | 6d | 2021-07-21 | 2021-07-28 |  |  |  | Dreamix - PostDoc 2; Dreamix - Tehničar 2; Solitek - Tehničar 2 | 144h | 3,120 |
| 154 | 13.3.3.2 | Integrisanje stvarne komponente | manual | 4d | 2021-07-29 | 2021-08-03 | 153 |  |  | Dreamix - PostDoc 3; Solitek - Tehničar 3 | 64h | 1,440 |
| 155 | 13.3.4 | **Integracija 4** |  | 10d | 2021-08-03 | 2021-08-17 | 152 |  |  |  | 208h | 4,560 |
| 156 | 13.3.4.1 | Zamena stub-ova stvarnim komponenatama | manual | 6d | 2021-08-04 | 2021-08-11 |  |  |  | Dreamix - PostDoc 1; Dreamix - Tehničar 1; Solitek - Tehničar 1 | 144h | 3,120 |
| 157 | 13.3.4.2 | Integrisanje stvarne komponente | manual | 4d | 2021-08-12 | 2021-08-17 | 156 |  |  | Dreamix - PostDoc 4; Solitek - Tehničar 4 | 64h | 1,440 |

| ID | WBS | Task | Type | Duration | Start | Finish | Predecessors | Total slack | Free slack | Resources | Work | Cost |
| --- | --- | --- | --- | --- | --- | --- | --- | --- | --- | --- | --- | --- |
| 158 | 13.3.5 | **Integracija 5** |  | 10d | 2021-08-17 | 2021-08-31 | 155 |  |  |  | 208h | 4,560 |
| 159 | 13.3.5.1 | Zamena stub-ova stvarnim komponenatama | manual | 6d | 2021-08-18 | 2021-08-25 |  |  |  | Dreamix - PostDoc 2; Dreamix - Tehničar 2; Solitek - Tehničar 2 | 144h | 3,120 |
| 160 | 13.3.5.2 | Integrisanje stvarne komponente | manual | 4d | 2021-08-26 | 2021-08-31 | 159 |  |  | Dreamix - PostDoc 3; Solitek - Tehničar 3 | 64h | 1,440 |
| 161 | 14 | Prekretnica M7 - Integrisan sistem | milestone, manual | 0d | 2019-05-01 | 2019-05-01 |  |  |  |  |  |  |
| 162 | 15 | **WP8 - Integraciono testiranje** |  | 109d | 2021-06-01 | 2021-10-29 | 133 |  |  | Licenca za softver za testiranje [1 Licenca] | 1368h | 35,956 |
| 163 | 15.1 | Definisanje plana integracionog testiranja |  | 10d | 2021-06-01 | 2021-06-14 |  | 10d | 0d | Dreamix - Administrator 1; Dreamix - PostDoc 4; Solitek - Tehničar 5; Solitek - Administrator 4 | 320h | 6,640 |
| 164 | 15.2 | Grupisanje komponenata koje su prošle jedinično testiranje |  | 6d | 2021-06-15 | 2021-06-22 | 163 | 10d | 0d | Dreamix - Administrator 1; Dreamix - Menadžer 1; Dreamix - PostDoc 1; ETF - Istraživač 1; Vattenfall - Menadžer 2 | 240h | 6,000 |
| 165 | 15.3 | **Testiranje sistema sa novom integrisanom komponentom** |  | 90d | 2021-06-23 | 2021-10-26 | 164 |  |  |  | 808h | 21,816 |
| 166 | 15.3.1 | **Testiranje sistema sa novom integrisanom komponentom 1** |  | 7d | 2021-07-06 | 2021-07-15 | 146 |  |  |  | 152h | 4,712 |
| 167 | 15.3.1.1 | Pisanje testova za testiranje sistema u datom trenutku | manual | 3d | 2021-07-07 | 2021-07-09 |  |  |  | ETF - Istraživač 1; Vattenfall - Istraživač 1; Vattenfall - PhD Student 1 | 72h | 2,256 |
| 168 | 15.3.1.2 | Sprovođenje testova | manual | 3d | 2021-07-12 | 2021-07-14 | 167 |  |  | ETF - Istraživač 2; Vattenfall - Istraživač 2; Vattenfall - PhD Student 2 | 72h | 2,256 |
| 169 | 15.3.1.3 | Pisanje izveštaja o testiranju | manual | 1d | 2021-07-15 | 2021-07-15 | 168 |  |  | Vattenfall - Administrator 1 | 8h | 200 |
| 170 | 15.3.2 | **Testiranje sistema sa novom integrisanom komponentom 2** |  | 7d | 2021-07-20 | 2021-07-29 | 149 |  |  |  | 176h | 3,840 |
| 171 | 15.3.2.1 | Pisanje testova za testiranje sistema u datom trenutku | manual | 3d | 2021-07-21 | 2021-07-23 |  |  |  | ETF - Istraživač 3; Solitek - Istraživač 2; Solitek - Tehničar 4; Solitek - Tehničar 5 | 96h | 2,064 |
| 172 | 15.3.2.2 | Sprovođenje testova | manual | 3d | 2021-07-26 | 2021-07-28 | 171 |  |  | ETF - Menadžer 1; Solitek - PhD Student 1; Solitek - Tehničar 3 | 72h | 1,656 |
| 173 | 15.3.2.3 | Pisanje izveštaja o testiranju | manual | 1d | 2021-07-29 | 2021-07-29 | 172 |  |  | ETF - Administrator 1 | 8h | 120 |
| 174 | 15.3.3 | **Testiranje sistema sa novom integrisanom komponentom 3** |  | 7d | 2021-08-03 | 2021-08-12 | 152 |  |  |  | 152h | 4,712 |
| 175 | 15.3.3.1 | Pisanje testova za testiranje sistema u datom trenutku | manual | 3d | 2021-08-04 | 2021-08-06 |  |  |  | ETF - Istraživač 1; Vattenfall - Istraživač 1; Vattenfall - PhD Student 1 | 72h | 2,256 |
| 176 | 15.3.3.2 | Sprovođenje testova | manual | 3d | 2021-08-09 | 2021-08-11 | 175 |  |  | ETF - Istraživač 2; Vattenfall - Istraživač 2; Vattenfall - PhD Student 2 | 72h | 2,256 |
| 177 | 15.3.3.3 | Pisanje izveštaja o testiranju | manual | 1d | 2021-08-12 | 2021-08-12 | 176 |  |  | Vattenfall - Administrator 1 | 8h | 200 |
| 178 | 15.3.4 | **Testiranje sistema sa novom integrisanom komponentom 4** |  | 7d | 2021-08-17 | 2021-08-26 | 155 |  |  |  | 176h | 3,840 |
| 179 | 15.3.4.1 | Pisanje testova za testiranje sistema u datom trenutku | manual | 3d | 2021-08-18 | 2021-08-20 |  |  |  | ETF - Istraživač 3; Solitek - Istraživač 2; Solitek - Tehničar 4; Solitek - Tehničar 5 | 96h | 2,064 |
| 180 | 15.3.4.2 | Sprovođenje testova | manual | 3d | 2021-08-23 | 2021-08-25 | 179 |  |  | ETF - Menadžer 1; Solitek - PhD Student 1; Solitek - Tehničar 3 | 72h | 1,656 |
| 181 | 15.3.4.3 | Pisanje izveštaja o testiranju | manual | 1d | 2021-08-26 | 2021-08-26 | 180 |  |  | ETF - Administrator 1 | 8h | 120 |

| ID | WBS | Task | Type | Duration | Start | Finish | Predecessors | Total slack | Constraint | Resources | Work | Cost |
| --- | --- | --- | --- | --- | --- | --- | --- | --- | --- | --- | --- | --- |
| 182 | 15.3.5 | **Testiranje sistema sa novom integrisanom komponentom 5** |  | 7d | 2021-08-31 | 2021-09-09 | 158 |  |  |  | 152h | 4,712 |
| 183 | 15.3.5.1 | Pisanje testova za testiranje sistema u datom trenutku | manual | 3d | 2021-09-01 | 2021-09-03 |  |  |  | ETF - Istraživač 1; Vattenfall - Istraživač 1; Vattenfall - PhD Student 1 | 72h | 2,256 |
| 184 | 15.3.5.2 | Sprovođenje testova | manual | 3d | 2021-09-06 | 2021-09-08 | 183 |  |  | ETF - Istraživač 2; Vattenfall - Istraživač 2; Vattenfall - PhD Student 2 | 72h | 2,256 |
| 185 | 15.3.5.3 | Pisanje izveštaja o testiranju | manual | 1d | 2021-09-09 | 2021-09-09 | 184 |  |  | Vattenfall - Administrator 1 | 8h | 200 |
| 186 | 16 | Prekretnica M8 - Testiran integrisan sistem | milestone | 0d | 2021-10-29 | 2021-10-29 | 162 | 130d |  |  |  |  |
| 187 | 17 | **WP9 - Evaluacija i disiminacija** |  | 131d | 2021-11-01 | 2022-04-30 | 162 |  |  | Reklamni materijal [1 RK] | 3600h | 141,360 |
| 188 | 17.1 | Analiziranje utisaka |  | 30d | 2021-11-01 | 2021-12-10 |  | 0d |  | ETF - Istraživač 1; IREC - Istraživač 1; Vattenfall - Istraživač 1 | 720h | 20,400 |
| 189 | 17.2 | Priprema reklamnog materijala | manual | 20d | 2021-12-13 | 2022-01-07 | 188 |  |  | Solitek - PhD Student 1; Solitek - PostDoc 1 | 320h | 8,240 |
| 190 | 17.3 | **Reklamiranje proizvoda** |  | 80d | 2022-01-10 | 2022-04-29 | 189 |  |  |  | 2560h | 72,720 |
| 191 | 17.3.1 | Organizovanje marketinških kampanja |  | 50d | 2022-01-10 | 2022-03-18 |  | 0d |  | IREC - PhD Student 1; IREC - PhD Student 2; Solitek - PostDoc 1; Solitek - PostDoc 2 | 1600h | 42,000 |
| 192 | 17.3.2 | Učestvovanje na sajmovima i konferencijama |  | 30d | 2022-03-21 | 2022-04-29 | 191 | 0d |  | IREC - PhD Student 1; IREC - PhD Student 2; Vattenfall - PhD Student 1; Vattenfall - PhD Student 2 | 960h | 30,720 |
| 193 | 18 | Prekretnica M9 - Sistem pušten u rad | milestone, manual | 0d | 2019-05-01 | 2019-05-01 |  |  |  |  |  |  |
| 194 | 19 | **WP10 - Upravljanje projektom** |  | 784d | 2019-05-01 | 2022-04-30 |  |  |  |  | 2216h | 66,892 |
| 195 | 19.1 | **Rukovođenje projektom** |  | 784d | 2019-05-01 | 2022-04-30 |  |  |  |  | 288h | 8,640 |
| 196 | 19.1.1 | Rukovođenje projektom 1 | manual | 1d | 2019-05-06 | 2019-05-06 |  |  | start no earlier than 2019-05-06 | IREC - Koordinator 1 | 8h | 240 |
| 197 | 19.1.2 | Rukovođenje projektom 2 | manual | 1d | 2019-06-03 | 2019-06-03 |  |  | start no earlier than 2019-06-03 | IREC - Koordinator 1 | 8h | 240 |
| 198 | 19.1.3 | Rukovođenje projektom 3 | manual | 1d | 2019-07-01 | 2019-07-01 |  |  | start no earlier than 2019-07-01 | IREC - Koordinator 1 | 8h | 240 |
| 199 | 19.1.4 | Rukovođenje projektom 4 | manual | 1d | 2019-08-05 | 2019-08-05 |  |  | start no earlier than 2019-08-05 | IREC - Koordinator 1 | 8h | 240 |
| 200 | 19.1.5 | Rukovođenje projektom 5 | manual | 1d | 2019-09-02 | 2019-09-02 |  |  | start no earlier than 2019-09-02 | IREC - Koordinator 1 | 8h | 240 |
| 201 | 19.1.6 | Rukovođenje projektom 6 | manual | 1d | 2019-10-07 | 2019-10-07 |  |  | start no earlier than 2019-10-07 | IREC - Koordinator 1 | 8h | 240 |
| 202 | 19.1.7 | Rukovođenje projektom 7 | manual | 1d | 2019-11-04 | 2019-11-04 |  |  | start no earlier than 2019-11-04 | IREC - Koordinator 1 | 8h | 240 |
| 203 | 19.1.8 | Rukovođenje projektom 8 | manual | 1d | 2019-12-02 | 2019-12-02 |  |  | start no earlier than 2019-12-02 | IREC - Koordinator 1 | 8h | 240 |
| 204 | 19.1.9 | Rukovođenje projektom 9 | manual | 1d | 2020-01-06 | 2020-01-06 |  |  | start no earlier than 2020-01-06 | IREC - Koordinator 1 | 8h | 240 |
| 205 | 19.1.10 | Rukovođenje projektom 10 | manual | 1d | 2020-02-03 | 2020-02-03 |  |  | start no earlier than 2020-02-03 | IREC - Koordinator 1 | 8h | 240 |
| 206 | 19.1.11 | Rukovođenje projektom 11 | manual | 1d | 2020-03-02 | 2020-03-02 |  |  | start no earlier than 2020-03-02 | IREC - Koordinator 1 | 8h | 240 |
| 207 | 19.1.12 | Rukovođenje projektom 12 | manual | 1d | 2020-04-06 | 2020-04-06 |  |  | start no earlier than 2020-04-06 | IREC - Koordinator 1 | 8h | 240 |
| 208 | 19.1.13 | Rukovođenje projektom 13 | manual | 1d | 2020-05-04 | 2020-05-04 |  |  | start no earlier than 2020-05-04 | IREC - Koordinator 1 | 8h | 240 |
| 209 | 19.1.14 | Rukovođenje projektom 14 | manual | 1d | 2020-06-01 | 2020-06-01 |  |  | start no earlier than 2020-06-01 | IREC - Koordinator 1 | 8h | 240 |
| 210 | 19.1.15 | Rukovođenje projektom 15 | manual | 1d | 2020-07-06 | 2020-07-06 |  |  | start no earlier than 2020-07-06 | IREC - Koordinator 1 | 8h | 240 |
| 211 | 19.1.16 | Rukovođenje projektom 16 | manual | 1d | 2020-08-03 | 2020-08-03 |  |  | start no earlier than 2020-08-03 | IREC - Koordinator 1 | 8h | 240 |
| 212 | 19.1.17 | Rukovođenje projektom 17 | manual | 1d | 2020-09-07 | 2020-09-07 |  |  | start no earlier than 2020-09-07 | IREC - Koordinator 1 | 8h | 240 |
| 213 | 19.1.18 | Rukovođenje projektom 18 | manual | 1d | 2020-10-05 | 2020-10-05 |  |  | start no earlier than 2020-10-05 | IREC - Koordinator 1 | 8h | 240 |
| 214 | 19.1.19 | Rukovođenje projektom 19 | manual | 1d | 2020-11-02 | 2020-11-02 |  |  | start no earlier than 2020-11-02 | IREC - Koordinator 1 | 8h | 240 |
| 215 | 19.1.20 | Rukovođenje projektom 20 | manual | 1d | 2020-12-07 | 2020-12-07 |  |  | start no earlier than 2020-12-07 | IREC - Koordinator 1 | 8h | 240 |
| 216 | 19.1.21 | Rukovođenje projektom 21 | manual | 1d | 2021-01-04 | 2021-01-04 |  |  | start no earlier than 2021-01-04 | IREC - Koordinator 1 | 8h | 240 |
| 217 | 19.1.22 | Rukovođenje projektom 22 | manual | 1d | 2021-02-01 | 2021-02-01 |  |  | start no earlier than 2021-02-01 | IREC - Koordinator 1 | 8h | 240 |
| 218 | 19.1.23 | Rukovođenje projektom 23 | manual | 1d | 2021-03-01 | 2021-03-01 |  |  | start no earlier than 2021-03-01 | IREC - Koordinator 1 | 8h | 240 |
| 219 | 19.1.24 | Rukovođenje projektom 24 | manual | 1d | 2021-04-05 | 2021-04-05 |  |  | start no earlier than 2021-04-05 | IREC - Koordinator 1 | 8h | 240 |
| 220 | 19.1.25 | Rukovođenje projektom 25 | manual | 1d | 2021-05-03 | 2021-05-03 |  |  | start no earlier than 2021-05-03 | IREC - Koordinator 1 | 8h | 240 |
| 221 | 19.1.26 | Rukovođenje projektom 26 | manual | 1d | 2021-06-07 | 2021-06-07 |  |  | start no earlier than 2021-06-07 | IREC - Koordinator 1 | 8h | 240 |
| 222 | 19.1.27 | Rukovođenje projektom 27 | manual | 1d | 2021-07-05 | 2021-07-05 |  |  | start no earlier than 2021-07-05 | IREC - Koordinator 1 | 8h | 240 |
| 223 | 19.1.28 | Rukovođenje projektom 28 | manual | 1d | 2021-08-02 | 2021-08-02 |  |  | start no earlier than 2021-08-02 | IREC - Koordinator 1 | 8h | 240 |
| 224 | 19.1.29 | Rukovođenje projektom 29 | manual | 1d | 2021-09-06 | 2021-09-06 |  |  | start no earlier than 2021-09-06 | IREC - Koordinator 1 | 8h | 240 |
| 225 | 19.1.30 | Rukovođenje projektom 30 | manual | 1d | 2021-10-04 | 2021-10-04 |  |  | start no earlier than 2021-10-04 | IREC - Koordinator 1 | 8h | 240 |
| 226 | 19.1.31 | Rukovođenje projektom 31 | manual | 1d | 2021-11-01 | 2021-11-01 |  |  | start no earlier than 2021-11-01 | IREC - Koordinator 1 | 8h | 240 |
| 227 | 19.1.32 | Rukovođenje projektom 32 | manual | 1d | 2021-12-06 | 2021-12-06 |  |  | start no earlier than 2021-12-06 | IREC - Koordinator 1 | 8h | 240 |
| 228 | 19.1.33 | Rukovođenje projektom 33 | manual | 1d | 2022-01-03 | 2022-01-03 |  |  | start no earlier than 2022-01-03 | IREC - Koordinator 1 | 8h | 240 |
| 229 | 19.1.34 | Rukovođenje projektom 34 | manual | 1d | 2022-02-07 | 2022-02-07 |  |  | start no earlier than 2022-02-07 | IREC - Koordinator 1 | 8h | 240 |
| 230 | 19.1.35 | Rukovođenje projektom 35 | manual | 1d | 2022-03-07 | 2022-03-07 |  |  | start no earlier than 2022-03-07 | IREC - Koordinator 1 | 8h | 240 |
| 231 | 19.1.36 | Rukovođenje projektom 36 | manual | 1d | 2022-04-04 | 2022-04-04 |  |  | start no earlier than 2022-04-04 | IREC - Koordinator 1 | 8h | 240 |
| 232 | 19.2 | Minimalizacija budžeta |  | 34d | 2019-05-01 | 2019-06-17 |  | 749d |  | IREC - PhD Student 3 | 272h | 7,072 |

| ID | WBS | Task | Type | Duration | Start | Finish | Total slack | Free slack | Constraint | Resources | Work | Cost |
| --- | --- | --- | --- | --- | --- | --- | --- | --- | --- | --- | --- | --- |
| 233 | 19.3 | **Minimalizacija rizika** |  | 784d | 2019-05-01 | 2022-04-30 |  |  |  |  | 288h | 8,640 |
| 234 | 19.3.1 | Minimalizacija rizika 1 | manual | 1d | 2019-05-06 | 2019-05-06 |  |  | start no earlier than 2019-05-06 | IREC - Koordinator 2 | 8h | 240 |
| 235 | 19.3.2 | Minimalizacija rizika 2 | manual | 1d | 2019-06-03 | 2019-06-03 |  |  | start no earlier than 2019-06-03 | IREC - Koordinator 2 | 8h | 240 |
| 236 | 19.3.3 | Minimalizacija rizika 3 | manual | 1d | 2019-07-01 | 2019-07-01 |  |  | start no earlier than 2019-07-01 | IREC - Koordinator 2 | 8h | 240 |
| 237 | 19.3.4 | Minimalizacija rizika 4 | manual | 1d | 2019-08-05 | 2019-08-05 |  |  | start no earlier than 2019-08-05 | IREC - Koordinator 2 | 8h | 240 |
| 238 | 19.3.5 | Minimalizacija rizika 5 | manual | 1d | 2019-09-02 | 2019-09-02 |  |  | start no earlier than 2019-09-02 | IREC - Koordinator 2 | 8h | 240 |
| 239 | 19.3.6 | Minimalizacija rizika 6 | manual | 1d | 2019-10-07 | 2019-10-07 |  |  | start no earlier than 2019-10-07 | IREC - Koordinator 2 | 8h | 240 |
| 240 | 19.3.7 | Minimalizacija rizika 7 | manual | 1d | 2019-11-04 | 2019-11-04 |  |  | start no earlier than 2019-11-04 | IREC - Koordinator 2 | 8h | 240 |
| 241 | 19.3.8 | Minimalizacija rizika 8 | manual | 1d | 2019-12-02 | 2019-12-02 |  |  | start no earlier than 2019-12-02 | IREC - Koordinator 2 | 8h | 240 |
| 242 | 19.3.9 | Minimalizacija rizika 9 | manual | 1d | 2020-01-06 | 2020-01-06 |  |  | start no earlier than 2020-01-06 | IREC - Koordinator 2 | 8h | 240 |
| 243 | 19.3.10 | Minimalizacija rizika 10 | manual | 1d | 2020-02-03 | 2020-02-03 |  |  | start no earlier than 2020-02-03 | IREC - Koordinator 2 | 8h | 240 |
| 244 | 19.3.11 | Minimalizacija rizika 11 | manual | 1d | 2020-03-02 | 2020-03-02 |  |  | start no earlier than 2020-03-02 | IREC - Koordinator 2 | 8h | 240 |
| 245 | 19.3.12 | Minimalizacija rizika 12 | manual | 1d | 2020-04-06 | 2020-04-06 |  |  | start no earlier than 2020-04-06 | IREC - Koordinator 2 | 8h | 240 |
| 246 | 19.3.13 | Minimalizacija rizika 13 | manual | 1d | 2020-05-04 | 2020-05-04 |  |  | start no earlier than 2020-05-04 | IREC - Koordinator 2 | 8h | 240 |
| 247 | 19.3.14 | Minimalizacija rizika 14 | manual | 1d | 2020-06-01 | 2020-06-01 |  |  | start no earlier than 2020-06-01 | IREC - Koordinator 2 | 8h | 240 |
| 248 | 19.3.15 | Minimalizacija rizika 15 | manual | 1d | 2020-07-06 | 2020-07-06 |  |  | start no earlier than 2020-07-06 | IREC - Koordinator 2 | 8h | 240 |
| 249 | 19.3.16 | Minimalizacija rizika 16 | manual | 1d | 2020-08-03 | 2020-08-03 |  |  | start no earlier than 2020-08-03 | IREC - Koordinator 2 | 8h | 240 |
| 250 | 19.3.17 | Minimalizacija rizika 17 | manual | 1d | 2020-09-07 | 2020-09-07 |  |  | start no earlier than 2020-09-07 | IREC - Koordinator 2 | 8h | 240 |
| 251 | 19.3.18 | Minimalizacija rizika 18 | manual | 1d | 2020-10-05 | 2020-10-05 |  |  | start no earlier than 2020-10-05 | IREC - Koordinator 2 | 8h | 240 |
| 252 | 19.3.19 | Minimalizacija rizika 19 | manual | 1d | 2020-11-02 | 2020-11-02 |  |  | start no earlier than 2020-11-02 | IREC - Koordinator 2 | 8h | 240 |
| 253 | 19.3.20 | Minimalizacija rizika 20 | manual | 1d | 2020-12-07 | 2020-12-07 |  |  | start no earlier than 2020-12-07 | IREC - Koordinator 2 | 8h | 240 |
| 254 | 19.3.21 | Minimalizacija rizika 21 | manual | 1d | 2021-01-04 | 2021-01-04 |  |  | start no earlier than 2021-01-04 | IREC - Koordinator 2 | 8h | 240 |
| 255 | 19.3.22 | Minimalizacija rizika 22 | manual | 1d | 2021-02-01 | 2021-02-01 |  |  | start no earlier than 2021-02-01 | IREC - Koordinator 2 | 8h | 240 |
| 256 | 19.3.23 | Minimalizacija rizika 23 | manual | 1d | 2021-03-01 | 2021-03-01 |  |  | start no earlier than 2021-03-01 | IREC - Koordinator 2 | 8h | 240 |
| 257 | 19.3.24 | Minimalizacija rizika 24 | manual | 1d | 2021-04-05 | 2021-04-05 |  |  | start no earlier than 2021-04-05 | IREC - Koordinator 2 | 8h | 240 |
| 258 | 19.3.25 | Minimalizacija rizika 25 | manual | 1d | 2021-05-03 | 2021-05-03 |  |  | start no earlier than 2021-05-03 | IREC - Koordinator 2 | 8h | 240 |
| 259 | 19.3.26 | Minimalizacija rizika 26 | manual | 1d | 2021-06-07 | 2021-06-07 |  |  | start no earlier than 2021-06-07 | IREC - Koordinator 2 | 8h | 240 |
| 260 | 19.3.27 | Minimalizacija rizika 27 | manual | 1d | 2021-07-05 | 2021-07-05 |  |  | start no earlier than 2021-07-05 | IREC - Koordinator 2 | 8h | 240 |
| 261 | 19.3.28 | Minimalizacija rizika 28 | manual | 1d | 2021-08-02 | 2021-08-02 |  |  | start no earlier than 2021-08-02 | IREC - Koordinator 2 | 8h | 240 |
| 262 | 19.3.29 | Minimalizacija rizika 29 | manual | 1d | 2021-09-06 | 2021-09-06 |  |  | start no earlier than 2021-09-06 | IREC - Koordinator 2 | 8h | 240 |
| 263 | 19.3.30 | Minimalizacija rizika 30 | manual | 1d | 2021-10-04 | 2021-10-04 |  |  | start no earlier than 2021-10-04 | IREC - Koordinator 2 | 8h | 240 |
| 264 | 19.3.31 | Minimalizacija rizika 31 | manual | 1d | 2021-11-01 | 2021-11-01 |  |  | start no earlier than 2021-11-01 | IREC - Koordinator 2 | 8h | 240 |
| 265 | 19.3.32 | Minimalizacija rizika 32 | manual | 1d | 2021-12-06 | 2021-12-06 |  |  | start no earlier than 2021-12-06 | IREC - Koordinator 2 | 8h | 240 |
| 266 | 19.3.33 | Minimalizacija rizika 33 | manual | 1d | 2022-01-03 | 2022-01-03 |  |  | start no earlier than 2022-01-03 | IREC - Koordinator 2 | 8h | 240 |
| 267 | 19.3.34 | Minimalizacija rizika 34 | manual | 1d | 2022-02-07 | 2022-02-07 |  |  | start no earlier than 2022-02-07 | IREC - Koordinator 2 | 8h | 240 |
| 268 | 19.3.35 | Minimalizacija rizika 35 | manual | 1d | 2022-03-07 | 2022-03-07 |  |  | start no earlier than 2022-03-07 | IREC - Koordinator 2 | 8h | 240 |
| 269 | 19.3.36 | Minimalizacija rizika 36 | manual | 1d | 2022-04-04 | 2022-04-04 |  |  | start no earlier than 2022-04-04 | IREC - Koordinator 2 | 8h | 240 |
| 270 | 19.4 | Minimalizacija iskorišćenja resursa |  | 34d | 2019-05-01 | 2019-06-17 | 699d | 0d |  | IREC - PostDoc 4 | 272h | 8,160 |

| ID | WBS | Task | Type | Duration | Start | Finish | Constraint | Resources | Work | Cost |
| --- | --- | --- | --- | --- | --- | --- | --- | --- | --- | --- |
| 271 | 19.5 | **Upravljanje aktivnostima** |  | 784d | 2019-05-01 | 2022-04-30 |  |  | 288h | 8,640 |
| 272 | 19.5.1 | Upravljanje aktivnostima 1 | manual | 1d | 2019-05-06 | 2019-05-06 | start no earlier than 2019-05-06 | IREC - Koordinator 3 | 8h | 240 |
| 273 | 19.5.2 | Upravljanje aktivnostima 2 | manual | 1d | 2019-06-03 | 2019-06-03 | start no earlier than 2019-06-03 | IREC - Koordinator 3 | 8h | 240 |
| 274 | 19.5.3 | Upravljanje aktivnostima 3 | manual | 1d | 2019-07-01 | 2019-07-01 | start no earlier than 2019-07-01 | IREC - Koordinator 3 | 8h | 240 |
| 275 | 19.5.4 | Upravljanje aktivnostima 4 | manual | 1d | 2019-08-05 | 2019-08-05 | start no earlier than 2019-08-05 | IREC - Koordinator 3 | 8h | 240 |
| 276 | 19.5.5 | Upravljanje aktivnostima 5 | manual | 1d | 2019-09-02 | 2019-09-02 | start no earlier than 2019-09-02 | IREC - Koordinator 3 | 8h | 240 |
| 277 | 19.5.6 | Upravljanje aktivnostima 6 | manual | 1d | 2019-10-07 | 2019-10-07 | start no earlier than 2019-10-07 | IREC - Koordinator 3 | 8h | 240 |
| 278 | 19.5.7 | Upravljanje aktivnostima 7 | manual | 1d | 2019-11-04 | 2019-11-04 | start no earlier than 2019-11-04 | IREC - Koordinator 3 | 8h | 240 |
| 279 | 19.5.8 | Upravljanje aktivnostima 8 | manual | 1d | 2019-12-02 | 2019-12-02 | start no earlier than 2019-12-02 | IREC - Koordinator 3 | 8h | 240 |
| 280 | 19.5.9 | Upravljanje aktivnostima 9 | manual | 1d | 2020-01-06 | 2020-01-06 | start no earlier than 2020-01-06 | IREC - Koordinator 3 | 8h | 240 |
| 281 | 19.5.10 | Upravljanje aktivnostima 10 | manual | 1d | 2020-02-03 | 2020-02-03 | start no earlier than 2020-02-03 | IREC - Koordinator 3 | 8h | 240 |
| 282 | 19.5.11 | Upravljanje aktivnostima 11 | manual | 1d | 2020-03-02 | 2020-03-02 | start no earlier than 2020-03-02 | IREC - Koordinator 3 | 8h | 240 |
| 283 | 19.5.12 | Upravljanje aktivnostima 12 | manual | 1d | 2020-04-06 | 2020-04-06 | start no earlier than 2020-04-06 | IREC - Koordinator 3 | 8h | 240 |
| 284 | 19.5.13 | Upravljanje aktivnostima 13 | manual | 1d | 2020-05-04 | 2020-05-04 | start no earlier than 2020-05-04 | IREC - Koordinator 3 | 8h | 240 |
| 285 | 19.5.14 | Upravljanje aktivnostima 14 | manual | 1d | 2020-06-01 | 2020-06-01 | start no earlier than 2020-06-01 | IREC - Koordinator 3 | 8h | 240 |
| 286 | 19.5.15 | Upravljanje aktivnostima 15 | manual | 1d | 2020-07-06 | 2020-07-06 | start no earlier than 2020-07-06 | IREC - Koordinator 3 | 8h | 240 |
| 287 | 19.5.16 | Upravljanje aktivnostima 16 | manual | 1d | 2020-08-03 | 2020-08-03 | start no earlier than 2020-08-03 | IREC - Koordinator 3 | 8h | 240 |
| 288 | 19.5.17 | Upravljanje aktivnostima 17 | manual | 1d | 2020-09-07 | 2020-09-07 | start no earlier than 2020-09-07 | IREC - Koordinator 3 | 8h | 240 |
| 289 | 19.5.18 | Upravljanje aktivnostima 18 | manual | 1d | 2020-10-05 | 2020-10-05 | start no earlier than 2020-10-05 | IREC - Koordinator 3 | 8h | 240 |
| 290 | 19.5.19 | Upravljanje aktivnostima 19 | manual | 1d | 2020-11-02 | 2020-11-02 | start no earlier than 2020-11-02 | IREC - Koordinator 3 | 8h | 240 |
| 291 | 19.5.20 | Upravljanje aktivnostima 20 | manual | 1d | 2020-12-07 | 2020-12-07 | start no earlier than 2020-12-07 | IREC - Koordinator 3 | 8h | 240 |
| 292 | 19.5.21 | Upravljanje aktivnostima 21 | manual | 1d | 2021-01-04 | 2021-01-04 | start no earlier than 2021-01-04 | IREC - Koordinator 3 | 8h | 240 |
| 293 | 19.5.22 | Upravljanje aktivnostima 22 | manual | 1d | 2021-02-01 | 2021-02-01 | start no earlier than 2021-02-01 | IREC - Koordinator 3 | 8h | 240 |
| 294 | 19.5.23 | Upravljanje aktivnostima 23 | manual | 1d | 2021-03-01 | 2021-03-01 | start no earlier than 2021-03-01 | IREC - Koordinator 3 | 8h | 240 |
| 295 | 19.5.24 | Upravljanje aktivnostima 24 | manual | 1d | 2021-04-05 | 2021-04-05 | start no earlier than 2021-04-05 | IREC - Koordinator 3 | 8h | 240 |
| 296 | 19.5.25 | Upravljanje aktivnostima 25 | manual | 1d | 2021-05-03 | 2021-05-03 | start no earlier than 2021-05-03 | IREC - Koordinator 3 | 8h | 240 |
| 297 | 19.5.26 | Upravljanje aktivnostima 26 | manual | 1d | 2021-06-07 | 2021-06-07 | start no earlier than 2021-06-07 | IREC - Koordinator 3 | 8h | 240 |
| 298 | 19.5.27 | Upravljanje aktivnostima 27 | manual | 1d | 2021-07-05 | 2021-07-05 | start no earlier than 2021-07-05 | IREC - Koordinator 3 | 8h | 240 |
| 299 | 19.5.28 | Upravljanje aktivnostima 28 | manual | 1d | 2021-08-02 | 2021-08-02 | start no earlier than 2021-08-02 | IREC - Koordinator 3 | 8h | 240 |
| 300 | 19.5.29 | Upravljanje aktivnostima 29 | manual | 1d | 2021-09-06 | 2021-09-06 | start no earlier than 2021-09-06 | IREC - Koordinator 3 | 8h | 240 |
| 301 | 19.5.30 | Upravljanje aktivnostima 30 | manual | 1d | 2021-10-04 | 2021-10-04 | start no earlier than 2021-10-04 | IREC - Koordinator 3 | 8h | 240 |
| 302 | 19.5.31 | Upravljanje aktivnostima 31 | manual | 1d | 2021-11-01 | 2021-11-01 | start no earlier than 2021-11-01 | IREC - Koordinator 3 | 8h | 240 |
| 303 | 19.5.32 | Upravljanje aktivnostima 32 | manual | 1d | 2021-12-06 | 2021-12-06 | start no earlier than 2021-12-06 | IREC - Koordinator 3 | 8h | 240 |
| 304 | 19.5.33 | Upravljanje aktivnostima 33 | manual | 1d | 2022-01-03 | 2022-01-03 | start no earlier than 2022-01-03 | IREC - Koordinator 3 | 8h | 240 |
| 305 | 19.5.34 | Upravljanje aktivnostima 34 | manual | 1d | 2022-02-07 | 2022-02-07 | start no earlier than 2022-02-07 | IREC - Koordinator 3 | 8h | 240 |
| 306 | 19.5.35 | Upravljanje aktivnostima 35 | manual | 1d | 2022-03-07 | 2022-03-07 | start no earlier than 2022-03-07 | IREC - Koordinator 3 | 8h | 240 |
| 307 | 19.5.36 | Upravljanje aktivnostima 36 | manual | 1d | 2022-04-04 | 2022-04-04 | start no earlier than 2022-04-04 | IREC - Koordinator 3 | 8h | 240 |

| ID | WBS | Task | Type | Duration | Start | Finish | Predecessors | Total slack | Free slack | Constraint | Resources | Work | Cost |
| --- | --- | --- | --- | --- | --- | --- | --- | --- | --- | --- | --- | --- | --- |
| 308 | 19.6 | **Mesečni sastanak - video konferencija** |  | 784d | 2019-05-01 | 2022-04-30 |  |  |  |  |  | 288h | 8,640 |
| 309 | 19.6.1 | Mesečni sastanak - video konferencija 1 | manual | 1d | 2019-05-06 | 2019-05-06 |  |  |  | start no earlier than 2019-05-06 | IREC - Koordinator 4 | 8h | 240 |
| 310 | 19.6.2 | Mesečni sastanak - video konferencija 2 | manual | 1d | 2019-06-03 | 2019-06-03 |  |  |  | start no earlier than 2019-06-03 | IREC - Koordinator 4 | 8h | 240 |
| 311 | 19.6.3 | Mesečni sastanak - video konferencija 3 | manual | 1d | 2019-07-01 | 2019-07-01 |  |  |  | start no earlier than 2019-07-01 | IREC - Koordinator 4 | 8h | 240 |
| 312 | 19.6.4 | Mesečni sastanak - video konferencija 4 | manual | 1d | 2019-08-05 | 2019-08-05 |  |  |  | start no earlier than 2019-08-05 | IREC - Koordinator 4 | 8h | 240 |
| 313 | 19.6.5 | Mesečni sastanak - video konferencija 5 | manual | 1d | 2019-09-02 | 2019-09-02 |  |  |  | start no earlier than 2019-09-02 | IREC - Koordinator 4 | 8h | 240 |
| 314 | 19.6.6 | Mesečni sastanak - video konferencija 6 | manual | 1d | 2019-10-07 | 2019-10-07 |  |  |  | start no earlier than 2019-10-07 | IREC - Koordinator 4 | 8h | 240 |
| 315 | 19.6.7 | Mesečni sastanak - video konferencija 7 | manual | 1d | 2019-11-04 | 2019-11-04 |  |  |  | start no earlier than 2019-11-04 | IREC - Koordinator 4 | 8h | 240 |
| 316 | 19.6.8 | Mesečni sastanak - video konferencija 8 | manual | 1d | 2019-12-02 | 2019-12-02 |  |  |  | start no earlier than 2019-12-02 | IREC - Koordinator 4 | 8h | 240 |
| 317 | 19.6.9 | Mesečni sastanak - video konferencija 9 | manual | 1d | 2020-01-06 | 2020-01-06 |  |  |  | start no earlier than 2020-01-06 | IREC - Koordinator 4 | 8h | 240 |
| 318 | 19.6.10 | Mesečni sastanak - video konferencija 10 | manual | 1d | 2020-02-03 | 2020-02-03 |  |  |  | start no earlier than 2020-02-03 | IREC - Koordinator 4 | 8h | 240 |
| 319 | 19.6.11 | Mesečni sastanak - video konferencija 11 | manual | 1d | 2020-03-02 | 2020-03-02 |  |  |  | start no earlier than 2020-03-02 | IREC - Koordinator 4 | 8h | 240 |
| 320 | 19.6.12 | Mesečni sastanak - video konferencija 12 | manual | 1d | 2020-04-06 | 2020-04-06 |  |  |  | start no earlier than 2020-04-06 | IREC - Koordinator 4 | 8h | 240 |
| 321 | 19.6.13 | Mesečni sastanak - video konferencija 13 | manual | 1d | 2020-05-04 | 2020-05-04 |  |  |  | start no earlier than 2020-05-04 | IREC - Koordinator 4 | 8h | 240 |
| 322 | 19.6.14 | Mesečni sastanak - video konferencija 14 | manual | 1d | 2020-06-01 | 2020-06-01 |  |  |  | start no earlier than 2020-06-01 | IREC - Koordinator 4 | 8h | 240 |
| 323 | 19.6.15 | Mesečni sastanak - video konferencija 15 | manual | 1d | 2020-07-06 | 2020-07-06 |  |  |  | start no earlier than 2020-07-06 | IREC - Koordinator 4 | 8h | 240 |
| 324 | 19.6.16 | Mesečni sastanak - video konferencija 16 | manual | 1d | 2020-08-03 | 2020-08-03 |  |  |  | start no earlier than 2020-08-03 | IREC - Koordinator 4 | 8h | 240 |
| 325 | 19.6.17 | Mesečni sastanak - video konferencija 17 | manual | 1d | 2020-09-07 | 2020-09-07 |  |  |  | start no earlier than 2020-09-07 | IREC - Koordinator 4 | 8h | 240 |
| 326 | 19.6.18 | Mesečni sastanak - video konferencija 18 | manual | 1d | 2020-10-05 | 2020-10-05 |  |  |  | start no earlier than 2020-10-05 | IREC - Koordinator 4 | 8h | 240 |
| 327 | 19.6.19 | Mesečni sastanak - video konferencija 19 | manual | 1d | 2020-11-02 | 2020-11-02 |  |  |  | start no earlier than 2020-11-02 | IREC - Koordinator 4 | 8h | 240 |
| 328 | 19.6.20 | Mesečni sastanak - video konferencija 20 | manual | 1d | 2020-12-07 | 2020-12-07 |  |  |  | start no earlier than 2020-12-07 | IREC - Koordinator 4 | 8h | 240 |
| 329 | 19.6.21 | Mesečni sastanak - video konferencija 21 | manual | 1d | 2021-01-04 | 2021-01-04 |  |  |  | start no earlier than 2021-01-04 | IREC - Koordinator 4 | 8h | 240 |
| 330 | 19.6.22 | Mesečni sastanak - video konferencija 22 | manual | 1d | 2021-02-01 | 2021-02-01 |  |  |  | start no earlier than 2021-02-01 | IREC - Koordinator 4 | 8h | 240 |
| 331 | 19.6.23 | Mesečni sastanak - video konferencija 23 | manual | 1d | 2021-03-01 | 2021-03-01 |  |  |  | start no earlier than 2021-03-01 | IREC - Koordinator 4 | 8h | 240 |
| 332 | 19.6.24 | Mesečni sastanak - video konferencija 24 | manual | 1d | 2021-04-05 | 2021-04-05 |  |  |  | start no earlier than 2021-04-05 | IREC - Koordinator 4 | 8h | 240 |
| 333 | 19.6.25 | Mesečni sastanak - video konferencija 25 | manual | 1d | 2021-05-03 | 2021-05-03 |  |  |  | start no earlier than 2021-05-03 | IREC - Koordinator 4 | 8h | 240 |
| 334 | 19.6.26 | Mesečni sastanak - video konferencija 26 | manual | 1d | 2021-06-07 | 2021-06-07 |  |  |  | start no earlier than 2021-06-07 | IREC - Koordinator 4 | 8h | 240 |
| 335 | 19.6.27 | Mesečni sastanak - video konferencija 27 | manual | 1d | 2021-07-05 | 2021-07-05 |  |  |  | start no earlier than 2021-07-05 | IREC - Koordinator 4 | 8h | 240 |
| 336 | 19.6.28 | Mesečni sastanak - video konferencija 28 | manual | 1d | 2021-08-02 | 2021-08-02 |  |  |  | start no earlier than 2021-08-02 | IREC - Koordinator 4 | 8h | 240 |
| 337 | 19.6.29 | Mesečni sastanak - video konferencija 29 | manual | 1d | 2021-09-06 | 2021-09-06 |  |  |  | start no earlier than 2021-09-06 | IREC - Koordinator 4 | 8h | 240 |
| 338 | 19.6.30 | Mesečni sastanak - video konferencija 30 | manual | 1d | 2021-10-04 | 2021-10-04 |  |  |  | start no earlier than 2021-10-04 | IREC - Koordinator 4 | 8h | 240 |
| 339 | 19.6.31 | Mesečni sastanak - video konferencija 31 | manual | 1d | 2021-11-01 | 2021-11-01 |  |  |  | start no earlier than 2021-11-01 | IREC - Koordinator 4 | 8h | 240 |
| 340 | 19.6.32 | Mesečni sastanak - video konferencija 32 | manual | 1d | 2021-12-06 | 2021-12-06 |  |  |  | start no earlier than 2021-12-06 | IREC - Koordinator 4 | 8h | 240 |
| 341 | 19.6.33 | Mesečni sastanak - video konferencija 33 | manual | 1d | 2022-01-03 | 2022-01-03 |  |  |  | start no earlier than 2022-01-03 | IREC - Koordinator 4 | 8h | 240 |
| 342 | 19.6.34 | Mesečni sastanak - video konferencija 34 | manual | 1d | 2022-02-07 | 2022-02-07 |  |  |  | start no earlier than 2022-02-07 | IREC - Koordinator 4 | 8h | 240 |
| 343 | 19.6.35 | Mesečni sastanak - video konferencija 35 | manual | 1d | 2022-03-07 | 2022-03-07 |  |  |  | start no earlier than 2022-03-07 | IREC - Koordinator 4 | 8h | 240 |
| 344 | 19.6.36 | Mesečni sastanak - video konferencija 36 | manual | 1d | 2022-04-04 | 2022-04-04 |  |  |  | start no earlier than 2022-04-04 | IREC - Koordinator 4 | 8h | 240 |
| 345 | 19.7 | Dorada MS Project fajla |  | 10d | 2019-05-01 | 2019-05-14 |  | 768d | 0d |  | IREC - Istraživač 1; Licenca za Project Manager [1 Licenca] | 80h | 4,300 |
| 346 | 19.8 | Upravljanje merama kvailteta i postupcima |  | 50d | 2019-06-18 | 2019-08-26 | 270 | 699d |  |  | IREC - Istraživač 3 | 400h | 11,600 |
| 347 | 19.9 | Upravljanje načinom komunikacije |  | 5d | 2019-05-15 | 2019-05-21 | 345 | 768d |  |  | IREC - Koordinator 1 | 40h | 1,200 |
